# Cronograma Escola XYZ

How a schedule from MS Project changed from version to version. A marks actual dates.

## Version 1 (saved 2018-06-04, file Cronograma Escola XYZ.mpp)

Note of the change: Documentação (de novo)

| ID | WBS | Task | Duration | Start | Finish | Predecessors | Total float |
| --- | --- | --- | --- | --- | --- | --- | --- |
| 1 | 1 | **Escola XYZ** | 53.7d? | 2018-06-04 | 2018-08-16 |  | 0d |
| 2 | 1.1 | **Prospecção** | 2.59d | 2018-06-04 | 2018-06-06 |  | 0d |
| 3 | 1.1.1 | **Ptec** | 1.02d | 2018-06-04 | 2018-06-05 |  | 0d |
| 4 |  | Estudar Domínio de Aplicação | 0.25d | 2018-06-04 | 2018-06-04 |  | 0d |
| 5 |  | Reunião com o Fornecedor de Requisitos | 0.2d | 2018-06-04 | 2018-06-04 | 4 | 0d |
| 6 |  | Redigir PTEC | 0.25d | 2018-06-04 | 2018-06-04 | 5 | 0d |
| 7 |  | Revisar PTEC | 0.12d | 2018-06-04 | 2018-06-04 | 6 | 0d |
| 8 |  | Aprova PTEC | 0.2d | 2018-06-04 | 2018-06-05 | 7 | 0d |
| 9 | 1.1.2 | **Est. Prel. Tam** | 1.25d | 2018-06-05 | 2018-06-06 |  | 0d |
| 10 |  | Estimar Tamanho do Projeto | 0.25d | 2018-06-05 | 2018-06-05 | 8 | 0d |
| 11 |  | Revisar Estimativa de Tamanho do Projeto | 1d | 2018-06-05 | 2018-06-06 | 10 | 0d |
| 12 | 1.1.3 | **Est. Prel. Cronograma e Orçamentos** | 0.31d | 2018-06-06 | 2018-06-06 |  | 0d |
| 13 |  | Elaborar Cronograma e Orçamentos Preliminares | 0.25d | 2018-06-06 | 2018-06-06 | 11 | 0d |
| 14 |  | Revisão da Elaboração | 0.06d | 2018-06-06 | 2018-06-06 | 13 | 0d |
| 15 | 1.2 | **Análise** | 2.69d? | 2018-06-06 | 2018-06-11 |  | 0d |
| 16 | 1.2.1 | **Documento de Requisitos** | 2d? | 2018-06-06 | 2018-06-08 |  | 0d |
| 17 |  | Reunião com o Cliente | 0.28d? | 2018-06-06 | 2018-06-06 | 14 | 0d |
| 18 |  | Elaborar DRE | 0.33d? | 2018-06-06 | 2018-06-07 | 17 | 0d |
| 19 |  | Revisar DRE | 1.12d? | 2018-06-07 | 2018-06-08 | 18 | 0d |
| 20 |  | Submeter DRE para Aprovação | 0.28d? | 2018-06-08 | 2018-06-08 | 19 | 0d |
| 21 | 1.2.2 | **MRB** | 0.69d? | 2018-06-08 | 2018-06-11 |  | 0d |
| 22 |  | Elaborar MRB | 0.5d? | 2018-06-08 | 2018-06-11 | 20 | 0d |
| 23 |  | Revisar MRB | 0.19d? | 2018-06-11 | 2018-06-11 | 22 | 0d |
| 24 | 1.3 | **Planejamento do Projeto** | 2.75d? | 2018-06-11 | 2018-06-14 |  | 0d |
| 25 | 1.3.1 | **Diagrama de Classes** | 1.62d? | 2018-06-11 | 2018-06-12 |  | 0d |
| 26 |  | Elaborar Diagrama de Classes | 0.62d? | 2018-06-11 | 2018-06-11 | 23 | 0d |
| 27 |  | Revisar Diagrama de Classes | 0.5d? | 2018-06-11 | 2018-06-12 | 26 | 0d |
| 28 |  | Atualizar MRB | 0.5d? | 2018-06-12 | 2018-06-12 | 27 | 0d |
| 29 | 1.3.2 | **Modelo Entidade de Relacionamento** | 1.12d? | 2018-06-12 | 2018-06-14 |  | 0d |
| 30 |  | Elaborar MER | 0.62d? | 2018-06-12 | 2018-06-13 | 28 | 0d |
| 31 |  | Revisar MER | 0.5d? | 2018-06-13 | 2018-06-14 | 30 | 0d |
| 32 | 1.4 | **Implementação** | 45.12d? | 2018-06-14 | 2018-08-16 |  | 0d |
| 33 | 1.4.1 | **Realease 1** | 10d? | 2018-06-14 | 2018-06-28 |  | 0d |
| 34 | 1.4.1.1 | **RFC01-Controle Professores** | 4d? | 2018-06-14 | 2018-06-20 |  | 0d |
| 35 |  | RFS01-Cadastrar Professores | 1d? | 2018-06-14 | 2018-06-15 | 31 | 0d |
| 36 |  | RFS02-Consultar Professores | 1d? | 2018-06-15 | 2018-06-18 | 35 | 0d |
| 37 |  | RFS03-Modificar Professores | 1d? | 2018-06-18 | 2018-06-19 | 36 | 0d |
| 38 |  | RFS04-Remover Professores | 1d? | 2018-06-19 | 2018-06-20 | 37 | 0d |
| 39 |  | Teste RFC01 | 1d? | 2018-06-20 | 2018-06-21 | 38 | 0d |
| 40 | 1.4.1.3 | **RFC02-Controle Alunos** | 4d? | 2018-06-21 | 2018-06-27 |  | 0d |
| 41 |  | RFS05-Cadastrar Alunos | 1d? | 2018-06-21 | 2018-06-22 | 39 | 0d |
| 42 |  | RFS06-Consultar Alunos | 1d? | 2018-06-22 | 2018-06-25 | 41 | 0d |
| 43 |  | RFS07-Modificar Alunos | 1d? | 2018-06-25 | 2018-06-26 | 42 | 0d |
| 44 |  | RFS08-Remover Alunos | 1d? | 2018-06-26 | 2018-06-27 | 43 | 0d |
| 45 |  | Teste RFC02 | 1d? | 2018-06-27 | 2018-06-28 | 44 | 0d |
| 46 | 1.4.2 | **Realease 2** | 9.62d? | 2018-06-28 | 2018-07-11 |  | 0d |
| 47 | 1.4.2.1 | **RFC03-Controle Salas** | 4d? | 2018-06-28 | 2018-07-04 |  | 0d |
| 48 |  | RFS09-Cadastrar Salas | 1d? | 2018-06-28 | 2018-06-29 | 45 | 0d |
| 49 |  | RFS10-Consultar Salas | 1d? | 2018-06-29 | 2018-07-02 | 48 | 0d |
| 50 |  | RFS11-Modificar Salas | 1d? | 2018-07-02 | 2018-07-03 | 49 | 0d |
| 51 |  | RFS12-Remover Salas | 1d? | 2018-07-03 | 2018-07-04 | 50 | 0d |
| 52 |  | Teste RFC03 | 1d? | 2018-07-04 | 2018-07-05 | 51 | 0d |
| 53 | 1.4.2.3 | **RFC04-Controle Turmas** | 4d? | 2018-07-05 | 2018-07-11 |  | 0d |
| 54 |  | RFS13-Cadastrar Turmas | 1d? | 2018-07-05 | 2018-07-06 | 52 | 0d |
| 55 |  | RFS14-Consultar Turmas | 1d? | 2018-07-06 | 2018-07-09 | 54 | 0d |
| 56 |  | RFS15-Modificar Turmas | 1d? | 2018-07-09 | 2018-07-10 | 55 | 0d |
| 57 |  | RFS16-Remover Turmas | 1d? | 2018-07-10 | 2018-07-11 | 56 | 0d |
| 58 |  | Teste RFC04 | 0.62d? | 2018-07-11 | 2018-07-11 | 57 | 0d |
| 59 | 1.4.3 | **Realease 3** | 10d? | 2018-07-11 | 2018-07-25 |  | 0d |
| 60 | 1.4.3.1 | **RFC05-Controle Funcionários** | 4d? | 2018-07-11 | 2018-07-17 |  | 0d |
| 61 |  | RFS17-Cadastrar Funcionários | 1d? | 2018-07-11 | 2018-07-12 | 58 | 0d |
| 62 |  | RFS18-Consultar Funcionários | 1d? | 2018-07-12 | 2018-07-13 | 61 | 0d |
| 63 |  | RFS19-Modificar Funcionários | 1d? | 2018-07-13 | 2018-07-16 | 62 | 0d |
| 64 |  | RFS20-Remover Funcionários | 1d? | 2018-07-16 | 2018-07-17 | 63 | 0d |
| 65 |  | Teste RFC05 | 1d? | 2018-07-17 | 2018-07-18 | 64 | 0d |
| 66 | 1.4.3.3 | **RFC06-Controle Equipamento** | 4d? | 2018-07-18 | 2018-07-24 |  | 0d |
| 67 |  | RFS21-Cadastrar Equipamento | 1d? | 2018-07-18 | 2018-07-19 | 65 | 0d |
| 68 |  | RFS22-Consultar Equipamento | 1d? | 2018-07-19 | 2018-07-20 | 67 | 0d |
| 69 |  | RFS23-Modificar Equipamento | 1d? | 2018-07-20 | 2018-07-23 | 68 | 0d |
| 70 |  | RFS24-Remover Equipamento | 1d? | 2018-07-23 | 2018-07-24 | 69 | 0d |

| ID | WBS | Task | Duration | Start | Finish | Predecessors | Total float |
| --- | --- | --- | --- | --- | --- | --- | --- |
| 71 |  | Teste RFC06 | 1d? | 2018-07-24 | 2018-07-25 | 70 | 0d |
| 72 | 1.4.4 | **Realease 4** | 15.5d? | 2018-07-25 | 2018-08-16 |  | 0d |
| 73 | 1.4.4.1 | **RFC07-Relatório de Matrícula de Alunos** | 1d? | 2018-07-25 | 2018-07-26 |  | 0d |
| 74 |  | RFS25-Emitir Relatório de Matrícula de Alunos | 1d? | 2018-07-25 | 2018-07-26 | 71 | 0d |
| 75 | 1.4.4.2 | **RFC08-Relatório de Contrato de Professores** | 1d? | 2018-07-26 | 2018-07-27 |  | 0d |
| 76 |  | RFS26-Emitir Relatório de Contrato de Professores | 1d? | 2018-07-26 | 2018-07-27 | 74 | 0d |
| 77 | 1.4.4.3 | **RNF01-Usabilidade** | 1d? | 2018-07-27 | 2018-07-30 |  | 0d |
| 78 |  | RNF01-Interface de Sistemas | 1d? | 2018-07-27 | 2018-07-30 | 76 | 0d |
| 79 | 1.4.4.4 | **RNF02-Desempemho** | 1d? | 2018-07-30 | 2018-07-31 |  | 0d |
| 80 |  | RNF02-Sistema Otimizado | 1d? | 2018-07-30 | 2018-07-31 | 78 | 0d |
| 81 | 1.4.4.5 | **RNF03-Segurança** | 5d? | 2018-07-31 | 2018-08-07 |  | 0d |
| 82 |  | RNF03-Segurança e Criptografia | 1d? | 2018-07-31 | 2018-08-01 | 80 | 0d |
| 83 |  | RNF04-Número Mínimo de Caracteres para Senha | 1d? | 2018-08-01 | 2018-08-02 | 82 | 0d |
| 84 |  | RNF05-Limite de Tentativas de Login | 1d? | 2018-08-02 | 2018-08-03 | 83 | 0d |
| 85 |  | RNF06-Logoff Automático | 1d? | 2018-08-03 | 2018-08-06 | 84 | 0d |
| 86 |  | RNF07-Logs de Usuários | 1d? | 2018-08-06 | 2018-08-07 | 85 | 0d |
| 87 | 1.4.4.6 | **RNF04-Confiabilidade** | 1d? | 2018-08-07 | 2018-08-08 |  | 0d |
| 88 |  | RNF08-Sistema e Plataforma | 1d? | 2018-08-07 | 2018-08-08 | 86 | 0d |
| 89 |  | Teste RFC07 | 1d? | 2018-08-08 | 2018-08-09 | 87 | 0d |
| 90 |  | Teste RFC08 | 1d? | 2018-08-09 | 2018-08-10 | 89 | 0d |
| 91 |  | Teste RNF01 | 1d? | 2018-08-10 | 2018-08-13 | 90 | 0d |
| 92 |  | Teste RNF02 | 1d? | 2018-08-13 | 2018-08-14 | 91 | 0d |
| 93 |  | Teste RNF03 | 0.5d? | 2018-08-14 | 2018-08-15 | 92 | 0d |
| 94 |  | Teste RNF04 | 1d? | 2018-08-15 | 2018-08-16 | 93 | 0d |
| 95 | 1.5 | **Monitoramento e Controle** | 0.55d? | 2018-08-16 | 2018-08-16 |  | 0d |
| 96 |  | Acompanhar Projeto | 0.19d? | 2018-08-16 | 2018-08-16 | 94 | 0d |
| 97 | 1.5.2 | **Gerência de Configuração** | 0.36d? | 2018-08-16 | 2018-08-16 |  | 0d |
| 98 |  | Elaborar Branch | 0.2d? | 2018-08-16 | 2018-08-16 | 96 | 0d |
| 99 |  | Realizar Merge da Branch para a Trunk | 0.16d? | 2018-08-16 | 2018-08-16 | 98 | 0d |

## Version 2 (saved 2018-06-18, file Cronograma Escola XYZ-UP1806.mpp)

Note of the change: Atualização Documentação dia 18/06

Last finish 2018-08-16 → 2018-08-08 (-8d). Complete tasks 0 → 40.

Changed:

| ID | Task | Start | Finish | Duration | Complete | Total float | Other |
| --- | --- | --- | --- | --- | --- | --- | --- |
| 1 | **Escola XYZ** | 2018-06-04 → 2018-06-04 08:00 A | 2018-08-16 → 2018-08-08 11:23 (-8d) | 53.7d? → 47.42d? | 0% → 20% |  | baseline start none → 2018-06-04 08:00; baseline finish none → 2018-08-16 14:36 |
| 2 | **Prospecção** | 2018-06-04 → 2018-06-04 08:00 A | 2018-06-06 → 2018-06-07 13:12 A (+1d) | 2.59d → 3.52d | 0% → 100% | 0d → none | baseline start none → 2018-06-04 08:00; baseline finish none → 2018-06-06 13:42 |
| 3 | **Ptec** | 2018-06-04 → 2018-06-04 08:00 A | 2018-06-05 → 2018-06-05 08:12 A |  | 0% → 100% | 0d → none | baseline start none → 2018-06-04 08:00; baseline finish none → 2018-06-05 08:12 |
| 4 | Estudar Domínio de Aplicação | 2018-06-04 → 2018-06-04 08:00 A | 2018-06-04 → 2018-06-04 10:00 A |  | 0% → 100% | 0d → none | baseline start none → 2018-06-04 08:00; baseline finish none → 2018-06-04 10:00 |
| 5 | Reunião com o Fornecedor de Requisitos | 2018-06-04 → 2018-06-04 10:00 A | 2018-06-04 → 2018-06-04 11:36 A |  | 0% → 100% | 0d → none | baseline start none → 2018-06-04 10:00; baseline finish none → 2018-06-04 11:36 |
| 6 | Redigir PTEC | 2018-06-04 → 2018-06-04 11:36 A | 2018-06-04 → 2018-06-04 14:56 A | 0.25d → 0.29d | 0% → 100% | 0d → none | baseline start none → 2018-06-04 11:36; baseline finish none → 2018-06-04 14:36 |
| 7 | Revisar PTEC | 2018-06-04 → 2018-06-04 14:36 A | 2018-06-04 → 2018-06-04 15:36 A |  | 0% → 100% | 0d → none | baseline start none → 2018-06-04 14:36; baseline finish none → 2018-06-04 15:36 |
| 8 | Aprova PTEC | 2018-06-04 → 2018-06-04 15:36 A | 2018-06-05 → 2018-06-05 08:12 A |  | 0% → 100% | 0d → none | baseline start none → 2018-06-04 15:36; baseline finish none → 2018-06-05 08:12 |
| 9 | **Est. Prel. Tam** | 2018-06-05 → 2018-06-05 08:12 A | 2018-06-06 → 2018-06-06 10:12 A |  | 0% → 100% | 0d → none | baseline start none → 2018-06-05 08:12; baseline finish none → 2018-06-06 10:12 |
| 10 | Estimar Tamanho do Projeto | 2018-06-05 → 2018-06-05 08:12 A | 2018-06-05 → 2018-06-05 10:12 A |  | 0% → 100% | 0d → none | baseline start none → 2018-06-05 08:12; baseline finish none → 2018-06-05 10:12 |
| 11 | Revisar Estimativa de Tamanho do Projeto | 2018-06-05 → 2018-06-05 10:12 A | 2018-06-06 → 2018-06-06 10:12 A |  | 0% → 100% | 0d → none | baseline start none → 2018-06-05 10:12; baseline finish none → 2018-06-06 10:12 |
| 12 | **Est. Prel. Cronograma e Orçamentos** | 2018-06-06 → 2018-06-06 10:12 A | 2018-06-06 → 2018-06-07 13:12 A (+1d) | 0.31d → 1.25d | 0% → 100% | 0d → none | baseline start none → 2018-06-06 10:12; baseline finish none → 2018-06-06 13:42 |
| 13 | Elaborar Cronograma e Orçamentos Preliminares | 2018-06-06 → 2018-06-06 10:12 A | 2018-06-06 → 2018-06-07 13:12 A (+1d) | 0.25d → 1.25d | 0% → 100% | 0d → none | baseline start none → 2018-06-06 10:12; baseline finish none → 2018-06-06 13:12 |
| 14 | Revisão da Elaboração | 2018-06-06 → 2018-06-06 13:12 A | 2018-06-06 → 2018-06-06 13:42 A |  | 0% → 100% | 0d → none | baseline start none → 2018-06-06 13:12; baseline finish none → 2018-06-06 13:42 |
| 15 | **Análise** | 2018-06-06 → 2018-06-06 13:42 A | 2018-06-11 → 2018-06-11 09:13 A | 2.69d? → 2.57d? | 0% → 100% | 0d → none | baseline start none → 2018-06-06 13:42; baseline finish none → 2018-06-11 10:13 |
| 16 | **Documento de Requisitos** | 2018-06-06 → 2018-06-06 13:42 A | 2018-06-08 → 2018-06-08 10:55 A | 2d? → 1.78d? | 0% → 100% | 0d → none | baseline start none → 2018-06-06 13:42; baseline finish none → 2018-06-08 13:43 |
| 17 | Reunião com o Cliente | 2018-06-06 → 2018-06-06 13:42 A | 2018-06-06 → 2018-06-06 14:06 A | 0.28d? → 0.05d? | 0% → 100% | 0d → none | baseline start none → 2018-06-06 13:42; baseline finish none → 2018-06-06 15:54 |
| 18 | Elaborar DRE | 2018-06-06 → 2018-06-06 15:54 A | 2018-06-07 → 2018-06-07 08:09 A | 0.33d? → 0.16d? | 0% → 100% | 0d → none | baseline start none → 2018-06-06 15:54; baseline finish none → 2018-06-07 09:31 |
| 19 | Revisar DRE | 2018-06-07 → 2018-06-07 09:31 A | 2018-06-08 → 2018-06-07 10:31 A (-1d) | 1.12d? → 0.12d? | 0% → 100% | 0d → none | baseline start none → 2018-06-07 09:31; baseline finish none → 2018-06-08 10:31 |
| 20 | Submeter DRE para Aprovação | 2018-06-08 → 2018-06-08 10:31 A | 2018-06-08 → 2018-06-08 10:55 A | 0.28d? → 0.05d? | 0% → 100% | 0d → none | baseline start none → 2018-06-08 10:31; baseline finish none → 2018-06-08 13:43 |
| 21 | **MRB** | 2018-06-08 → 2018-06-08 13:43 A | 2018-06-11 → 2018-06-11 09:13 A | 0.69d? → 0.56d? | 0% → 100% | 0d → none | baseline start none → 2018-06-08 13:43; baseline finish none → 2018-06-11 10:13 |
| 22 | Elaborar MRB | 2018-06-08 → 2018-06-08 13:43 A | 2018-06-11 → 2018-06-08 15:43 A (-3d) | 0.5d? → 0.25d? | 0% → 100% | 0d → none | baseline start none → 2018-06-08 13:43; baseline finish none → 2018-06-11 08:43 |
| 23 | Revisar MRB | 2018-06-11 → 2018-06-11 08:43 A | 2018-06-11 → 2018-06-11 09:13 A | 0.19d? → 0.06d? | 0% → 100% | 0d → none | baseline start none → 2018-06-11 08:43; baseline finish none → 2018-06-11 10:13 |
| 24 | **Planejamento do Projeto** | 2018-06-11 → 2018-06-11 10:13 A | 2018-06-14 → 2018-06-13 14:22 A (-1d) | 2.75d? → 2.39d? | 0% → 100% | 0d → none | baseline start none → 2018-06-11 10:13; baseline finish none → 2018-06-14 08:13 |
| 25 | **Diagrama de Classes** | 2018-06-11 → 2018-06-11 10:13 A | 2018-06-12 → 2018-06-12 14:53 A | 1.62d? → 1.46d? | 0% → 100% | 0d → none | baseline start none → 2018-06-11 10:13; baseline finish none → 2018-06-12 16:13 |
| 26 | Elaborar Diagrama de Classes | 2018-06-11 → 2018-06-11 10:13 A | 2018-06-11 → 2018-06-11 11:43 A | 0.62d? → 0.19d? | 0% → 100% | 0d → none | baseline start none → 2018-06-11 10:13; baseline finish none → 2018-06-11 16:13 |
| 27 | Revisar Diagrama de Classes | 2018-06-11 → 2018-06-11 16:13 A | 2018-06-12 → 2018-06-11 16:53 A (-1d) | 0.5d? → 0.08d? | 0% → 100% | 0d → none | baseline start none → 2018-06-11 16:13; baseline finish none → 2018-06-12 11:13 |
| 28 | Atualizar MRB | 2018-06-12 → 2018-06-12 11:13 A | 2018-06-12 → 2018-06-12 14:53 A | 0.5d? → 0.33d? | 0% → 100% | 0d → none | baseline start none → 2018-06-12 11:13; baseline finish none → 2018-06-12 16:13 |
| 29 | **Modelo Entidade de Relacionamento** | 2018-06-12 → 2018-06-12 16:13 A | 2018-06-14 → 2018-06-13 14:22 A (-1d) | 1.12d? → 0.77d? | 0% → 100% | 0d → none | baseline start none → 2018-06-12 16:13; baseline finish none → 2018-06-14 08:13 |
| 30 | Elaborar MER | 2018-06-12 → 2018-06-12 16:13 A | 2018-06-13 → 2018-06-13 08:13 A | 0.62d? → 0.12d? | 0% → 100% | 0d → none | baseline start none → 2018-06-12 16:13; baseline finish none → 2018-06-13 13:13 |
| 31 | Revisar MER | 2018-06-13 → 2018-06-13 13:13 A | 2018-06-14 → 2018-06-13 14:22 A (-1d) | 0.5d? → 0.14d? | 0% → 100% | 0d → none | baseline start none → 2018-06-13 13:13; baseline finish none → 2018-06-14 08:13 |
| 32 | **Implementação** | 2018-06-14 → 2018-06-14 08:13 A | 2018-08-16 → 2018-08-07 16:00 (-9d) | 45.12d? → 38.85d? | 0% → 6% |  | baseline start none → 2018-06-14 08:13; baseline finish none → 2018-08-16 09:13 |
| 33 | **Realease 1** | 2018-06-14 → 2018-06-14 08:13 A | 2018-06-28 → 2018-06-27 08:45 A (-1d) | 10d? → 9.07d? | 0% → 100% | 0d → none | baseline start none → 2018-06-14 08:13; baseline finish none → 2018-06-28 08:13 |
| 34 | **RFC01-Controle Professores** | 2018-06-14 → 2018-06-14 08:13 A | 2018-06-20 → 2018-06-19 08:37 A (-1d) | 4d? → 3.05d? | 0% → 100% | 0d → none | baseline start none → 2018-06-14 08:13; baseline finish none → 2018-06-20 08:13 |
| 35 | RFS01-Cadastrar Professores | 2018-06-14 → 2018-06-14 08:13 A | 2018-06-15 → 2018-06-14 14:01 A (-1d) | 1d? → 0.6d? | 0% → 100% | 0d → none | baseline start none → 2018-06-14 08:13; baseline finish none → 2018-06-15 08:13 |
| 36 | RFS02-Consultar Professores | 2018-06-15 → 2018-06-15 08:13 A | 2018-06-18 → 2018-06-15 08:37 A (-3d) | 1d? → 0.05d? | 0% → 100% | 0d → none | baseline start none → 2018-06-15 08:13; baseline finish none → 2018-06-18 08:13 |
| 37 | RFS03-Modificar Professores | 2018-06-18 → 2018-06-18 08:13 A | 2018-06-19 → 2018-06-18 08:37 A (-1d) | 1d? → 0.05d? | 0% → 100% | 0d → none | baseline start none → 2018-06-18 08:13; baseline finish none → 2018-06-19 08:13 |
| 38 | RFS04-Remover Professores | 2018-06-19 → 2018-06-19 08:13 A | 2018-06-20 → 2018-06-19 08:37 A (-1d) | 1d? → 0.05d? | 0% → 100% | 0d → none | baseline start none → 2018-06-19 08:13; baseline finish none → 2018-06-20 08:13 |
| 39 | Teste RFC01 | 2018-06-20 → 2018-06-20 08:13 A | 2018-06-21 → 2018-06-20 08:32 A (-1d) | 1d? → 0.04d? | 0% → 100% | 0d → none | baseline start none → 2018-06-20 08:13; baseline finish none → 2018-06-21 08:13 |
| 40 | **RFC02-Controle Alunos** | 2018-06-21 → 2018-06-21 08:13 A | 2018-06-27 → 2018-06-26 08:37 A (-1d) | 4d? → 3.05d? | 0% → 100% | 0d → none | baseline start none → 2018-06-21 08:13; baseline finish none → 2018-06-27 08:13 |
| 41 | RFS05-Cadastrar Alunos | 2018-06-21 → 2018-06-21 08:13 A | 2018-06-22 → 2018-06-21 08:32 A (-1d) | 1d? → 0.04d? | 0% → 100% | 0d → none | baseline start none → 2018-06-21 08:13; baseline finish none → 2018-06-22 08:13 |
| 42 | RFS06-Consultar Alunos | 2018-06-22 → 2018-06-22 08:13 A | 2018-06-25 → 2018-06-22 08:37 A (-3d) | 1d? → 0.05d? | 0% → 100% | 0d → none | baseline start none → 2018-06-22 08:13; baseline finish none → 2018-06-25 08:13 |
| 43 | RFS07-Modificar Alunos | 2018-06-25 → 2018-06-25 08:13 A | 2018-06-26 → 2018-06-25 08:37 A (-1d) | 1d? → 0.05d? | 0% → 100% | 0d → none | baseline start none → 2018-06-25 08:13; baseline finish none → 2018-06-26 08:13 |
| 44 | RFS08-Remover Alunos | 2018-06-26 → 2018-06-26 08:13 A | 2018-06-27 → 2018-06-26 08:37 A (-1d) | 1d? → 0.05d? | 0% → 100% | 0d → none | baseline start none → 2018-06-26 08:13; baseline finish none → 2018-06-27 08:13 |
| 45 | Teste RFC02 | 2018-06-27 → 2018-06-27 08:13 A | 2018-06-28 → 2018-06-27 08:45 A (-1d) | 1d? → 0.07d? | 0% → 100% | 0d → none | baseline start none → 2018-06-27 08:13; baseline finish none → 2018-06-28 08:13 |
| 46 | **Realease 2** | 2018-06-28 → 2018-06-27 08:45 A (-1d) | 2018-07-11 → 2018-07-03 11:00 A (-8d) | 9.62d? → 4.28d? | 0% → 100% | 0d → none | baseline start none → 2018-06-28 08:13; baseline finish none → 2018-07-11 14:13 |
| 47 | **RFC03-Controle Salas** | 2018-06-28 → 2018-06-27 08:45 A (-1d) | 2018-07-04 → 2018-07-02 09:09 A (-2d) | 4d? → 3.05d? | 0% → 100% | 0d → none | baseline start none → 2018-06-28 08:13; baseline finish none → 2018-07-04 08:13 |
| 48 | RFS09-Cadastrar Salas | 2018-06-28 → 2018-06-27 08:45 A (-1d) | 2018-06-29 → 2018-06-27 09:04 A (-2d) | 1d? → 0.04d? | 0% → 100% | 0d → none | baseline start none → 2018-06-28 08:13; baseline finish none → 2018-06-29 08:13 |
| 49 | RFS10-Consultar Salas | 2018-06-29 → 2018-06-28 08:45 A (-1d) | 2018-07-02 → 2018-06-28 09:09 A (-4d) | 1d? → 0.05d? | 0% → 100% | 0d → none | baseline start none → 2018-06-29 08:13; baseline finish none → 2018-07-02 08:13 |
| 50 | RFS11-Modificar Salas | 2018-07-02 → 2018-06-29 08:45 A (-3d) | 2018-07-03 → 2018-06-29 09:09 A (-4d) | 1d? → 0.05d? | 0% → 100% | 0d → none | baseline start none → 2018-07-02 08:13; baseline finish none → 2018-07-03 08:13 |
| 51 | RFS12-Remover Salas | 2018-07-03 → 2018-07-02 08:45 A (-1d) | 2018-07-04 → 2018-07-02 09:09 A (-2d) | 1d? → 0.05d? | 0% → 100% | 0d → none | baseline start none → 2018-07-03 08:13; baseline finish none → 2018-07-04 08:13 |
| 52 | Teste RFC03 | 2018-07-04 → 2018-07-03 08:45 A (-1d) | 2018-07-05 → 2018-07-03 09:17 A (-2d) | 1d? → 0.07d? | 0% → 100% | 0d → none | baseline start none → 2018-07-04 08:13; baseline finish none → 2018-07-05 08:13 |
| 53 | **RFC04-Controle Turmas** | 2018-07-05 → 2018-07-03 09:17 A (-2d) | 2018-07-11 → 2018-07-03 10:48 A (-8d) | 4d? → 0.19d? | 0% → 100% | 0d → none | baseline start none → 2018-07-05 08:13; baseline finish none → 2018-07-11 08:13 |
| 54 | RFS13-Cadastrar Turmas | 2018-07-05 → 2018-07-03 09:17 A (-2d) | 2018-07-06 → 2018-07-03 09:36 A (-3d) | 1d? → 0.04d? | 0% → 100% | 0d → none | baseline start none → 2018-07-05 08:13; baseline finish none → 2018-07-06 08:13 |
| 55 | RFS14-Consultar Turmas | 2018-07-06 → 2018-07-03 09:36 A (-3d) | 2018-07-09 → 2018-07-03 10:00 A (-6d) | 1d? → 0.05d? | 0% → 100% | 0d → none | baseline start none → 2018-07-06 08:13; baseline finish none → 2018-07-09 08:13 |
| 56 | RFS15-Modificar Turmas | 2018-07-09 → 2018-07-03 10:00 A (-6d) | 2018-07-10 → 2018-07-03 10:24 A (-7d) | 1d? → 0.05d? | 0% → 100% | 0d → none | baseline start none → 2018-07-09 08:13; baseline finish none → 2018-07-10 08:13 |
| 57 | RFS16-Remover Turmas | 2018-07-10 → 2018-07-03 10:24 A (-7d) | 2018-07-11 → 2018-07-03 10:48 A (-8d) | 1d? → 0.05d? | 0% → 100% | 0d → none | baseline start none → 2018-07-10 08:13; baseline finish none → 2018-07-11 08:13 |
| 58 | Teste RFC04 | 2018-07-11 → 2018-07-03 10:48 A (-8d) | 2018-07-11 → 2018-07-03 11:00 A (-8d) | 0.62d? → 0.03d? | 0% → 100% | 0d → none | baseline start none → 2018-07-11 08:13; baseline finish none → 2018-07-11 14:13 |
| 59 | **Realease 3** | 2018-07-11 → 2018-07-03 11:00 (-8d) | 2018-07-25 → 2018-07-17 11:00 (-8d) |  |  |  | baseline start none → 2018-07-11 14:13; baseline finish none → 2018-07-25 14:13 |
| 60 | **RFC05-Controle Funcionários** | 2018-07-11 → 2018-07-03 11:00 (-8d) | 2018-07-17 → 2018-07-09 11:00 (-8d) |  |  |  | baseline start none → 2018-07-11 14:13; baseline finish none → 2018-07-17 14:13 |
| 61 | RFS17-Cadastrar Funcionários | 2018-07-11 → 2018-07-03 11:00 (-8d) | 2018-07-12 → 2018-07-04 11:00 (-8d) |  |  |  | baseline start none → 2018-07-11 14:13; baseline finish none → 2018-07-12 14:13 |
| 62 | RFS18-Consultar Funcionários | 2018-07-12 → 2018-07-04 11:00 (-8d) | 2018-07-13 → 2018-07-05 11:00 (-8d) |  |  |  | baseline start none → 2018-07-12 14:13; baseline finish none → 2018-07-13 14:13 |
| 63 | RFS19-Modificar Funcionários | 2018-07-13 → 2018-07-05 11:00 (-8d) | 2018-07-16 → 2018-07-06 11:00 (-10d) |  |  |  | baseline start none → 2018-07-13 14:13; baseline finish none → 2018-07-16 14:13 |
| 64 | RFS20-Remover Funcionários | 2018-07-16 → 2018-07-06 11:00 (-10d) | 2018-07-17 → 2018-07-09 11:00 (-8d) |  |  |  | baseline start none → 2018-07-16 14:13; baseline finish none → 2018-07-17 14:13 |
| 65 | Teste RFC05 | 2018-07-17 → 2018-07-09 11:00 (-8d) | 2018-07-18 → 2018-07-10 11:00 (-8d) |  |  |  | baseline start none → 2018-07-17 14:13; baseline finish none → 2018-07-18 14:13 |
| 66 | **RFC06-Controle Equipamento** | 2018-07-18 → 2018-07-10 11:00 (-8d) | 2018-07-24 → 2018-07-16 11:00 (-8d) |  |  |  | baseline start none → 2018-07-18 14:13; baseline finish none → 2018-07-24 14:13 |
| 67 | RFS21-Cadastrar Equipamento | 2018-07-18 → 2018-07-10 11:00 (-8d) | 2018-07-19 → 2018-07-11 11:00 (-8d) |  |  |  | baseline start none → 2018-07-18 14:13; baseline finish none → 2018-07-19 14:13 |
| 68 | RFS22-Consultar Equipamento | 2018-07-19 → 2018-07-11 11:00 (-8d) | 2018-07-20 → 2018-07-12 11:00 (-8d) |  |  |  | baseline start none → 2018-07-19 14:13; baseline finish none → 2018-07-20 14:13 |
| 69 | RFS23-Modificar Equipamento | 2018-07-20 → 2018-07-12 11:00 (-8d) | 2018-07-23 → 2018-07-13 11:00 (-10d) |  |  |  | baseline start none → 2018-07-20 14:13; baseline finish none → 2018-07-23 14:13 |
| 70 | RFS24-Remover Equipamento | 2018-07-23 → 2018-07-13 11:00 (-10d) | 2018-07-24 → 2018-07-16 11:00 (-8d) |  |  |  | baseline start none → 2018-07-23 14:13; baseline finish none → 2018-07-24 14:13 |

| ID | Task | Start | Finish | Other |
| --- | --- | --- | --- | --- |
| 71 | Teste RFC06 | 2018-07-24 → 2018-07-16 11:00 (-8d) | 2018-07-25 → 2018-07-17 11:00 (-8d) | baseline start none → 2018-07-24 14:13; baseline finish none → 2018-07-25 14:13 |
| 72 | **Realease 4** | 2018-07-25 → 2018-07-17 11:00 (-8d) | 2018-08-16 → 2018-08-07 16:00 (-9d) | baseline start none → 2018-07-25 14:13; baseline finish none → 2018-08-16 09:13 |
| 73 | **RFC07-Relatório de Matrícula de Alunos** | 2018-07-25 → 2018-07-17 11:00 (-8d) | 2018-07-26 → 2018-07-18 11:00 (-8d) | baseline start none → 2018-07-25 14:13; baseline finish none → 2018-07-26 14:13 |
| 74 | RFS25-Emitir Relatório de Matrícula de Alunos | 2018-07-25 → 2018-07-17 11:00 (-8d) | 2018-07-26 → 2018-07-18 11:00 (-8d) | baseline start none → 2018-07-25 14:13; baseline finish none → 2018-07-26 14:13 |
| 75 | **RFC08-Relatório de Contrato de Professores** | 2018-07-26 → 2018-07-18 11:00 (-8d) | 2018-07-27 → 2018-07-19 11:00 (-8d) | baseline start none → 2018-07-26 14:13; baseline finish none → 2018-07-27 14:13 |
| 76 | RFS26-Emitir Relatório de Contrato de Professores | 2018-07-26 → 2018-07-18 11:00 (-8d) | 2018-07-27 → 2018-07-19 11:00 (-8d) | baseline start none → 2018-07-26 14:13; baseline finish none → 2018-07-27 14:13 |
| 77 | **RNF01-Usabilidade** | 2018-07-27 → 2018-07-19 11:00 (-8d) | 2018-07-30 → 2018-07-20 11:00 (-10d) | baseline start none → 2018-07-27 14:13; baseline finish none → 2018-07-30 14:13 |
| 78 | RNF01-Interface de Sistemas | 2018-07-27 → 2018-07-19 11:00 (-8d) | 2018-07-30 → 2018-07-20 11:00 (-10d) | baseline start none → 2018-07-27 14:13; baseline finish none → 2018-07-30 14:13 |
| 79 | **RNF02-Desempemho** | 2018-07-30 → 2018-07-20 11:00 (-10d) | 2018-07-31 → 2018-07-23 11:00 (-8d) | baseline start none → 2018-07-30 14:13; baseline finish none → 2018-07-31 14:13 |
| 80 | RNF02-Sistema Otimizado | 2018-07-30 → 2018-07-20 11:00 (-10d) | 2018-07-31 → 2018-07-23 11:00 (-8d) | baseline start none → 2018-07-30 14:13; baseline finish none → 2018-07-31 14:13 |
| 81 | **RNF03-Segurança** | 2018-07-31 → 2018-07-23 11:00 (-8d) | 2018-08-07 → 2018-07-30 11:00 (-8d) | baseline start none → 2018-07-31 14:13; baseline finish none → 2018-08-07 14:13 |
| 82 | RNF03-Segurança e Criptografia | 2018-07-31 → 2018-07-23 11:00 (-8d) | 2018-08-01 → 2018-07-24 11:00 (-8d) | baseline start none → 2018-07-31 14:13; baseline finish none → 2018-08-01 14:13 |
| 83 | RNF04-Número Mínimo de Caracteres para Senha | 2018-08-01 → 2018-07-24 11:00 (-8d) | 2018-08-02 → 2018-07-25 11:00 (-8d) | baseline start none → 2018-08-01 14:13; baseline finish none → 2018-08-02 14:13 |
| 84 | RNF05-Limite de Tentativas de Login | 2018-08-02 → 2018-07-25 11:00 (-8d) | 2018-08-03 → 2018-07-26 11:00 (-8d) | baseline start none → 2018-08-02 14:13; baseline finish none → 2018-08-03 14:13 |
| 85 | RNF06-Logoff Automático | 2018-08-03 → 2018-07-26 11:00 (-8d) | 2018-08-06 → 2018-07-27 11:00 (-10d) | baseline start none → 2018-08-03 14:13; baseline finish none → 2018-08-06 14:13 |
| 86 | RNF07-Logs de Usuários | 2018-08-06 → 2018-07-27 11:00 (-10d) | 2018-08-07 → 2018-07-30 11:00 (-8d) | baseline start none → 2018-08-06 14:13; baseline finish none → 2018-08-07 14:13 |
| 87 | **RNF04-Confiabilidade** | 2018-08-07 → 2018-07-30 11:00 (-8d) | 2018-08-08 → 2018-07-31 11:00 (-8d) | baseline start none → 2018-08-07 14:13; baseline finish none → 2018-08-08 14:13 |
| 88 | RNF08-Sistema e Plataforma | 2018-08-07 → 2018-07-30 11:00 (-8d) | 2018-08-08 → 2018-07-31 11:00 (-8d) | baseline start none → 2018-08-07 14:13; baseline finish none → 2018-08-08 14:13 |
| 89 | Teste RFC07 | 2018-08-08 → 2018-07-31 11:00 (-8d) | 2018-08-09 → 2018-08-01 11:00 (-8d) | baseline start none → 2018-08-08 14:13; baseline finish none → 2018-08-09 14:13 |
| 90 | Teste RFC08 | 2018-08-09 → 2018-08-01 11:00 (-8d) | 2018-08-10 → 2018-08-02 11:00 (-8d) | baseline start none → 2018-08-09 14:13; baseline finish none → 2018-08-10 14:13 |
| 91 | Teste RNF01 | 2018-08-10 → 2018-08-02 11:00 (-8d) | 2018-08-13 → 2018-08-03 11:00 (-10d) | baseline start none → 2018-08-10 14:13; baseline finish none → 2018-08-13 14:13 |
| 92 | Teste RNF02 | 2018-08-13 → 2018-08-03 11:00 (-10d) | 2018-08-14 → 2018-08-06 11:00 (-8d) | baseline start none → 2018-08-13 14:13; baseline finish none → 2018-08-14 14:13 |
| 93 | Teste RNF03 | 2018-08-14 → 2018-08-06 11:00 (-8d) | 2018-08-15 → 2018-08-06 16:00 (-9d) | baseline start none → 2018-08-14 14:13; baseline finish none → 2018-08-15 09:13 |
| 94 | Teste RNF04 | 2018-08-15 → 2018-08-06 16:00 (-9d) | 2018-08-16 → 2018-08-07 16:00 (-9d) | baseline start none → 2018-08-15 09:13; baseline finish none → 2018-08-16 09:13 |
| 95 | **Monitoramento e Controle** | 2018-08-16 → 2018-08-07 16:00 (-9d) | 2018-08-16 → 2018-08-08 11:23 (-8d) | baseline start none → 2018-08-16 09:13; baseline finish none → 2018-08-16 14:36 |
| 96 | Acompanhar Projeto | 2018-08-16 → 2018-08-07 16:00 (-9d) | 2018-08-16 → 2018-08-08 08:30 (-8d) | baseline start none → 2018-08-16 09:13; baseline finish none → 2018-08-16 10:43 |
| 97 | **Gerência de Configuração** | 2018-08-16 → 2018-08-08 08:30 (-8d) | 2018-08-16 → 2018-08-08 11:23 (-8d) | baseline start none → 2018-08-16 10:43; baseline finish none → 2018-08-16 14:36 |
| 98 | Elaborar Branch | 2018-08-16 → 2018-08-08 08:30 (-8d) | 2018-08-16 → 2018-08-08 10:08 (-8d) | baseline start none → 2018-08-16 10:43; baseline finish none → 2018-08-16 13:21 |
| 99 | Realizar Merge da Branch para a Trunk | 2018-08-16 → 2018-08-08 10:08 (-8d) | 2018-08-16 → 2018-08-08 11:23 (-8d) | baseline start none → 2018-08-16 13:21; baseline finish none → 2018-08-16 14:36 |

## Version 3 (saved 2018-06-22, file Cronograma Escola XYZ-UP2206.mpp)

Note of the change: Atualização Documentação dia 22/06

Last finish 2018-08-08 → 2018-07-12 (-27d). Complete tasks 40 → 69.

Changed:

| ID | Task | Start | Finish | Duration | Complete | Total float |
| --- | --- | --- | --- | --- | --- | --- |
| 1 | **Escola XYZ** |  | 2018-08-08 11:23 → 2018-07-12 13:55 A (-27d) | 47.42d? → 28.62d? | 20% → 100% | 0d → none |
| 32 | **Implementação** |  | 2018-08-07 16:00 → 2018-07-12 08:33 A (-26d) | 38.85d? → 20.04d? | 6% → 100% | 0d → none |
| 59 | **Realease 3** | 2018-07-03 11:00 A | 2018-07-17 11:00 → 2018-07-06 14:48 A (-11d) | 10d? → 3.35d? | 0% → 100% | 0d → none |
| 60 | **RFC05-Controle Funcionários** | 2018-07-03 11:00 A | 2018-07-09 11:00 → 2018-07-06 11:24 A (-3d) | 4d? → 3.05d? | 0% → 100% | 0d → none |
| 61 | RFS17-Cadastrar Funcionários | 2018-07-03 11:00 A | 2018-07-04 11:00 → 2018-07-03 11:19 A (-1d) | 1d? → 0.04d? | 0% → 100% | 0d → none |
| 62 | RFS18-Consultar Funcionários | 2018-07-04 11:00 A | 2018-07-05 11:00 → 2018-07-04 11:24 A (-1d) | 1d? → 0.05d? | 0% → 100% | 0d → none |
| 63 | RFS19-Modificar Funcionários | 2018-07-05 11:00 A | 2018-07-06 11:00 → 2018-07-05 11:24 A (-1d) | 1d? → 0.05d? | 0% → 100% | 0d → none |
| 64 | RFS20-Remover Funcionários | 2018-07-06 11:00 A | 2018-07-09 11:00 → 2018-07-06 11:24 A (-3d) | 1d? → 0.05d? | 0% → 100% | 0d → none |
| 65 | Teste RFC05 | 2018-07-09 11:00 → 2018-07-06 11:24 A (-3d) | 2018-07-10 11:00 → 2018-07-06 11:48 A (-4d) | 1d? → 0.05d? | 0% → 100% | 0d → none |
| 66 | **RFC06-Controle Equipamento** | 2018-07-10 11:00 → 2018-07-06 11:48 A (-4d) | 2018-07-16 11:00 → 2018-07-06 14:24 A (-10d) | 4d? → 0.2d? | 0% → 100% | 0d → none |
| 67 | RFS21-Cadastrar Equipamento | 2018-07-10 11:00 → 2018-07-06 11:48 A (-4d) | 2018-07-11 11:00 → 2018-07-06 13:12 A (-5d) | 1d? → 0.05d? | 0% → 100% | 0d → none |
| 68 | RFS22-Consultar Equipamento | 2018-07-11 11:00 → 2018-07-06 13:12 A (-5d) | 2018-07-12 11:00 → 2018-07-06 13:36 A (-6d) | 1d? → 0.05d? | 0% → 100% | 0d → none |
| 69 | RFS23-Modificar Equipamento | 2018-07-12 11:00 → 2018-07-06 13:36 A (-6d) | 2018-07-13 11:00 → 2018-07-06 14:00 A (-7d) | 1d? → 0.05d? | 0% → 100% | 0d → none |
| 70 | RFS24-Remover Equipamento | 2018-07-13 11:00 → 2018-07-06 14:00 A (-7d) | 2018-07-16 11:00 → 2018-07-06 14:24 A (-10d) | 1d? → 0.05d? | 0% → 100% | 0d → none |
| 71 | Teste RFC06 | 2018-07-16 11:00 → 2018-07-06 14:24 A (-10d) | 2018-07-17 11:00 → 2018-07-06 14:48 A (-11d) | 1d? → 0.05d? | 0% → 100% | 0d → none |
| 72 | **Realease 4** | 2018-07-17 11:00 → 2018-07-06 14:48 A (-11d) | 2018-08-07 16:00 → 2018-07-12 08:33 A (-26d) | 15.5d? → 3.34d? | 0% → 100% | 0d → none |
| 73 | **RFC07-Relatório de Matrícula de Alunos** | 2018-07-17 11:00 → 2018-07-06 14:48 A (-11d) | 2018-07-18 11:00 → 2018-07-09 14:48 A (-9d) |  | 0% → 100% | 0d → none |
| 74 | RFS25-Emitir Relatório de Matrícula de Alunos | 2018-07-17 11:00 → 2018-07-06 14:48 A (-11d) | 2018-07-18 11:00 → 2018-07-09 14:48 A (-9d) |  | 0% → 100% | 0d → none |
| 75 | **RFC08-Relatório de Contrato de Professores** | 2018-07-18 11:00 → 2018-07-09 14:48 A (-9d) | 2018-07-19 11:00 → 2018-07-10 14:48 A (-9d) |  | 0% → 100% | 0d → none |
| 76 | RFS26-Emitir Relatório de Contrato de Professores | 2018-07-18 11:00 → 2018-07-09 14:48 A (-9d) | 2018-07-19 11:00 → 2018-07-10 14:48 A (-9d) |  | 0% → 100% | 0d → none |
| 77 | **RNF01-Usabilidade** | 2018-07-19 11:00 → 2018-07-10 14:48 A (-9d) | 2018-07-20 11:00 → 2018-07-10 15:48 A (-10d) | 1d? → 0.12d? | 0% → 100% | 0d → none |
| 78 | RNF01-Interface de Sistemas | 2018-07-19 11:00 → 2018-07-10 14:48 A (-9d) | 2018-07-20 11:00 → 2018-07-10 15:48 A (-10d) | 1d? → 0.12d? | 0% → 100% | 0d → none |
| 79 | **RNF02-Desempemho** | 2018-07-20 11:00 → 2018-07-10 15:48 A (-10d) | 2018-07-23 11:00 → 2018-07-10 16:48 A (-13d) | 1d? → 0.12d? | 0% → 100% | 0d → none |
| 80 | RNF02-Sistema Otimizado | 2018-07-20 11:00 → 2018-07-10 15:48 A (-10d) | 2018-07-23 11:00 → 2018-07-10 16:48 A (-13d) | 1d? → 0.12d? | 0% → 100% | 0d → none |
| 81 | **RNF03-Segurança** | 2018-07-23 11:00 → 2018-07-10 16:48 A (-13d) | 2018-07-30 11:00 → 2018-07-11 14:08 A (-19d) | 5d? → 0.67d? | 0% → 100% | 0d → none |
| 82 | RNF03-Segurança e Criptografia | 2018-07-23 11:00 → 2018-07-10 16:48 A (-13d) | 2018-07-24 11:00 → 2018-07-11 08:48 A (-13d) | 1d? → 0.12d? | 0% → 100% | 0d → none |
| 83 | RNF04-Número Mínimo de Caracteres para Senha | 2018-07-24 11:00 → 2018-07-11 08:48 A (-13d) | 2018-07-25 11:00 → 2018-07-11 09:48 A (-14d) | 1d? → 0.12d? | 0% → 100% | 0d → none |
| 84 | RNF05-Limite de Tentativas de Login | 2018-07-25 11:00 → 2018-07-11 09:48 A (-14d) | 2018-07-26 11:00 → 2018-07-11 10:48 A (-15d) | 1d? → 0.12d? | 0% → 100% | 0d → none |
| 85 | RNF06-Logoff Automático | 2018-07-26 11:00 → 2018-07-11 10:48 A (-15d) | 2018-07-27 11:00 → 2018-07-11 11:48 A (-16d) | 1d? → 0.12d? | 0% → 100% | 0d → none |
| 86 | RNF07-Logs de Usuários | 2018-07-27 11:00 → 2018-07-11 11:48 A (-16d) | 2018-07-30 11:00 → 2018-07-11 14:08 A (-19d) | 1d? → 0.17d? | 0% → 100% | 0d → none |
| 87 | **RNF04-Confiabilidade** | 2018-07-30 11:00 → 2018-07-11 14:08 A (-19d) | 2018-07-31 11:00 → 2018-07-11 15:08 A (-20d) | 1d? → 0.12d? | 0% → 100% | 0d → none |
| 88 | RNF08-Sistema e Plataforma | 2018-07-30 11:00 → 2018-07-11 14:08 A (-19d) | 2018-07-31 11:00 → 2018-07-11 15:08 A (-20d) | 1d? → 0.12d? | 0% → 100% | 0d → none |
| 89 | Teste RFC07 | 2018-07-31 11:00 → 2018-07-11 15:08 A (-20d) | 2018-08-01 11:00 → 2018-07-11 15:40 A (-21d) | 1d? → 0.07d? | 0% → 100% | 0d → none |
| 90 | Teste RFC08 | 2018-08-01 11:00 → 2018-07-11 15:40 A (-21d) | 2018-08-02 11:00 → 2018-07-11 16:04 A (-22d) | 1d? → 0.05d? | 0% → 100% | 0d → none |
| 91 | Teste RNF01 | 2018-08-02 11:00 → 2018-07-11 16:04 A (-22d) | 2018-08-03 11:00 → 2018-07-11 16:28 A (-23d) | 1d? → 0.05d? | 0% → 100% | 0d → none |
| 92 | Teste RNF02 | 2018-08-03 11:00 → 2018-07-11 16:28 A (-23d) | 2018-08-06 11:00 → 2018-07-12 08:00 A (-25d) | 1d? → 0.07d? | 0% → 100% | 0d → none |
| 93 | Teste RNF03 | 2018-08-06 11:00 → 2018-07-12 08:00 A (-25d) | 2018-08-06 16:00 → 2018-07-12 08:09 A (-25d) | 0.5d? → 0.02d? | 0% → 100% | 0d → none |
| 94 | Teste RNF04 | 2018-08-06 16:00 → 2018-07-12 08:09 A (-25d) | 2018-08-07 16:00 → 2018-07-12 08:33 A (-26d) | 1d? → 0.05d? | 0% → 100% | 0d → none |
| 95 | **Monitoramento e Controle** | 2018-08-07 16:00 → 2018-07-12 08:33 A (-26d) | 2018-08-08 11:23 → 2018-07-12 13:55 A (-27d) |  | 0% → 100% | 0d → none |
| 96 | Acompanhar Projeto | 2018-08-07 16:00 → 2018-07-12 08:33 A (-26d) | 2018-08-08 08:30 → 2018-07-12 10:03 A (-27d) |  | 0% → 100% | 0d → none |
| 97 | **Gerência de Configuração** | 2018-08-08 08:30 → 2018-07-12 10:03 A (-27d) | 2018-08-08 11:23 → 2018-07-12 13:55 A (-27d) |  | 0% → 100% | 0d → none |
| 98 | Elaborar Branch | 2018-08-08 08:30 → 2018-07-12 10:03 A (-27d) | 2018-08-08 10:08 → 2018-07-12 11:40 A (-27d) |  | 0% → 100% | 0d → none |
| 99 | Realizar Merge da Branch para a Trunk | 2018-08-08 10:08 → 2018-07-12 11:40 A (-27d) | 2018-08-08 11:23 → 2018-07-12 13:55 A (-27d) |  | 0% → 100% | 0d → none |
